# FOCUSDATA

How a schedule from MS Project changed from version to version. A marks actual dates.

## Version 1 (saved 2016-05-07)

Note of the change: initial version

| ID | WBS | Task | Duration | Start | Finish | Predecessors | Complete | Total float | Constraint |
| --- | --- | --- | --- | --- | --- | --- | --- | --- | --- |
| 1 | 1 | **Contracts** | 0d | 2016-04-01 | 2016-04-01 |  |  | 0d |  |
| 2 |  | Supply Lot Sale Agreement | 0d | 2016-04-01 A | 2016-04-01 A |  | 100% |  | start no earlier than 2016-04-01 |
| 3 |  | Supply Construction Agreement | 0d | 2016-04-01 A | 2016-04-01 A |  | 100% |  | start no earlier than 2016-04-01 |
| 4 |  | Supply Contract Specifications | 0d | 2016-04-01 A | 2016-04-01 A | 3 | 100% |  | finish no earlier than 2016-04-08 |
| 5 |  | Supply Contract Site Plan | 0d | 2016-04-01 A | 2016-04-01 A | 3 | 100% |  | finish no earlier than 2016-04-08 |
| 6 |  | Secure Financing | 0d | 2016-04-01 A | 2016-04-01 A | 3 | 100% |  | finish no earlier than 2016-04-08 |
| 7 |  | Construction Loan Settlement | 0d | 2016-04-01 A | 2016-04-01 A |  | 100% |  | start no earlier than 2016-04-01 |
| 8 | 2 | **FocusData项目建设** | 155d | 2016-04-11 A | 2016-10-07 |  | 20% | 0d |  |
| 9 | 2.1 | **需求阶段** | 12d | 2016-04-11 A | 2016-04-23 A |  | 100% |  |  |
| 10 | 2.1.1 | **医疗黄页需求说明书** | 6d | 2016-04-11 | 2016-04-16 |  |  | 0d |  |
| 11 | 2.1.1.1 | **诊所管理** | 3d | 2016-04-11 | 2016-04-13 |  |  | 0d |  |
| 12 |  | 新诊所注册 | 3d | 2016-04-11 A | 2016-04-13 A |  | 100% |  |  |
| 13 |  | 修改医生信息 | 3d | 2016-04-11 A | 2016-04-13 A |  | 100% |  |  |
| 14 |  | 更改密码/忘记密码 | 3d | 2016-04-11 A | 2016-04-13 A |  | 100% |  |  |
| 15 | 2.1.1.2 | **用户个人管理** | 3d | 2016-04-11 | 2016-04-13 |  |  | 0d |  |
| 16 |  | 新用户注册 | 3d | 2016-04-11 A | 2016-04-13 A |  | 100% |  |  |
| 17 |  | 用户修改个人信息 | 3d | 2016-04-11 A | 2016-04-13 A |  | 100% |  |  |
| 18 |  | 更改密码/忘记密码 | 3d | 2016-04-11 A | 2016-04-13 A |  | 100% |  |  |
| 19 | 2.1.1.3 | **管理员界面** | 3d | 2016-04-11 | 2016-04-13 |  |  | 0d |  |
| 20 |  | 查询医生和用户 | 3d | 2016-04-11 A | 2016-04-13 A |  | 100% |  |  |
| 21 |  | 修改个人信息 | 3d | 2016-04-11 A | 2016-04-13 A |  | 100% |  |  |
| 22 |  | 重置账户密码 | 3d | 2016-04-11 A | 2016-04-13 A |  | 100% |  |  |
| 23 |  | 锁定账户 | 3d | 2016-04-11 A | 2016-04-13 A |  | 100% |  |  |
| 24 | 2.1.1.4 | **展示医生信息** | 3d | 2016-04-14 | 2016-04-16 | 19 |  | 0d |  |
| 25 |  | 根据类别展示医生 | 3d | 2016-04-14 A | 2016-04-16 A |  | 100% |  |  |
| 26 |  | 根据地区展示医生 | 3d | 2016-04-14 A | 2016-04-16 A |  | 100% |  |  |
| 27 | 2.1.1.5 | **搜索医生** | 3d | 2016-04-14 | 2016-04-16 | 19 |  | 0d |  |
| 28 |  | 根据类别搜索 | 3d | 2016-04-14 A | 2016-04-16 A |  | 100% |  |  |
| 29 |  | 根据医生信息搜索 | 3d | 2016-04-14 A | 2016-04-16 A |  | 100% |  |  |
| 30 |  | 根据距离搜索 | 3d | 2016-04-14 A | 2016-04-16 A |  | 100% |  |  |
| 31 | 2.1.1.6 | **在线预约医生** | 3d | 2016-04-14 | 2016-04-16 | 19 |  | 0d |  |
| 32 |  | 用户可在线预约医生 | 3d | 2016-04-14 A | 2016-04-16 A |  | 100% |  |  |
| 33 | 2.1.1.7 | **多语言** | 3d | 2016-04-14 | 2016-04-16 | 19 |  | 0d |  |
| 34 |  | 用户可选择语言配置 | 3d | 2016-04-14 A | 2016-04-16 A |  | 100% |  |  |
| 35 | 2.1.2 | **嵌入式预约模块需求说明书** | 6d | 2016-04-11 | 2016-04-16 |  |  | 0d |  |
| 36 | 2.1.2.1 | **嵌入式模块** | 6d | 2016-04-11 | 2016-04-16 |  |  | 0d |  |
| 37 |  | 嵌入式模块 | 6d | 2016-04-11 A | 2016-04-16 A |  | 100% |  |  |
| 38 | 2.1.2.2 | **在线预约医生** | 6d | 2016-04-11 | 2016-04-16 |  |  | 0d |  |
| 39 |  | 医生可预约时间表 | 6d | 2016-04-11 A | 2016-04-16 A |  | 100% |  |  |
| 40 |  | 预约医生 | 6d | 2016-04-11 A | 2016-04-16 A |  | 100% |  |  |
| 41 | 2.1.2.3 | **多语言** | 6d | 2016-04-11 | 2016-04-16 |  |  | 0d |  |
| 42 |  | 用户可选择语言配置 | 6d | 2016-04-11 A | 2016-04-16 A |  | 100% |  |  |
| 43 | 2.1.3 | **桥软件需求说明书** | 6d | 2016-04-18 | 2016-04-23 |  |  | 0d |  |
| 44 | 2.1.3.1 | **同步医院和服务端数据库** | 6d | 2016-04-18 | 2016-04-23 | 35 |  | 0d |  |
| 45 |  | 同步医生可预约时间 | 6d | 2016-04-18 A | 2016-04-23 A |  | 100% |  |  |
| 46 |  | 同步预约信息 | 6d | 2016-04-18 A | 2016-04-23 A |  | 100% |  |  |
| 47 | 2.1.3.2 | **初始化诊所** | 6d | 2016-04-18 | 2016-04-23 | 35 |  | 0d |  |
| 48 |  | 初始化诊所 | 6d | 2016-04-18 A | 2016-04-23 A |  | 100% |  |  |
| 49 | 2.1.3.3 | **创建系统服务** | 6d | 2016-04-18 | 2016-04-23 | 35 |  | 0d |  |
| 50 |  | 创建Windows服务 | 6d | 2016-04-18 A | 2016-04-23 A |  | 100% |  |  |
| 51 | 2.1.4 | **手机APP需求说明书** | 6d | 2016-04-18 | 2016-04-23 |  |  | 0d |  |
| 52 | 2.1.4.1 | **预约医生** | 6d | 2016-04-18 | 2016-04-23 | 10 |  | 0d |  |
| 53 |  | 搜索医生 | 6d | 2016-04-18 A | 2016-04-23 A |  | 100% |  |  |
| 54 |  | 预约医生 | 6d | 2016-04-18 A | 2016-04-23 A |  | 100% |  |  |
| 55 |  | 自动Check-in | 6d | 2016-04-18 A | 2016-04-23 A |  | 100% |  |  |
| 56 | 2.1.4.2 | **多语言** | 6d | 2016-04-18 | 2016-04-23 | 10 |  | 0d |  |
| 57 |  | 用户可选择语言配置 | 6d | 2016-04-18 A | 2016-04-23 A |  | 100% |  |  |
| 58 | 2.2 | **UI/UE设计阶段** | 12d | 2016-04-25 A | 2016-05-07 |  | 88% | 0d |  |
| 59 | 2.2.1 | **医疗黄页UI/UE设计** | 6d | 2016-04-25 | 2016-04-30 |  |  | 0d |  |
| 60 | 2.2.1.1 | **诊所管理** | 3d | 2016-04-25 | 2016-04-27 | 9 |  | 0d |  |
| 61 |  | 新诊所注册 | 3d | 2016-04-25 A | 2016-04-27 A |  | 100% |  |  |
| 62 |  | 修改医生信息 | 3d | 2016-04-25 A | 2016-04-27 A |  | 100% |  |  |
| 63 |  | 更改密码/忘记密码 | 3d | 2016-04-25 A | 2016-04-27 A |  | 100% |  |  |
| 64 | 2.2.1.2 | **用户个人管理** | 3d | 2016-04-25 | 2016-04-27 | 9 |  | 0d |  |
| 65 |  | 新用户注册 | 3d | 2016-04-25 A | 2016-04-27 A |  | 100% |  |  |
| 66 |  | 用户修改个人信息 | 3d | 2016-04-25 A | 2016-04-27 A |  | 100% |  |  |
| 67 |  | 更改密码/忘记密码 | 3d | 2016-04-25 A | 2016-04-27 A |  | 100% |  |  |
| 68 | 2.2.1.3 | **管理员界面** | 3d | 2016-04-25 | 2016-04-27 | 9 |  | 0d |  |
| 69 |  | 查询医生和用户 | 3d | 2016-04-25 A | 2016-04-27 A |  | 100% |  |  |
| 70 |  | 修改个人信息 | 3d | 2016-04-25 A | 2016-04-27 A |  | 100% |  |  |

| ID | WBS | Task | Duration | Start | Finish | Predecessors | Complete | Total float |
| --- | --- | --- | --- | --- | --- | --- | --- | --- |
| 71 |  | 重置账户密码 | 3d | 2016-04-25 A | 2016-04-27 A |  | 100% |  |
| 72 |  | 锁定账户 | 3d | 2016-04-25 A | 2016-04-27 A |  | 100% |  |
| 73 | 2.2.1.4 | **展示医生信息** | 3d | 2016-04-28 | 2016-04-30 | 68 |  | 0d |
| 74 |  | 根据类别展示医生 | 3d | 2016-04-28 A | 2016-04-30 A |  | 100% |  |
| 75 |  | 根据地区展示医生 | 3d | 2016-04-28 A | 2016-04-30 A |  | 100% |  |
| 76 | 2.2.1.5 | **搜索医生** | 3d | 2016-04-28 | 2016-04-30 | 68 |  | 0d |
| 77 |  | 根据类别搜索 | 3d | 2016-04-28 A | 2016-04-30 A |  | 100% |  |
| 78 |  | 根据医生信息搜索 | 3d | 2016-04-28 A | 2016-04-30 A |  | 100% |  |
| 79 |  | 根据距离搜索 | 3d | 2016-04-28 A | 2016-04-30 A |  | 100% |  |
| 80 | 2.2.1.6 | **在线预约医生** | 3d | 2016-04-28 | 2016-04-30 | 68 |  | 0d |
| 81 |  | 用户可在线预约医生 | 3d | 2016-04-28 A | 2016-04-30 A |  | 100% |  |
| 82 | 2.2.1.7 | **多语言** | 3d | 2016-04-28 | 2016-04-30 | 68 |  | 0d |
| 83 |  | 用户可选择语言配置 | 3d | 2016-04-28 A | 2016-04-30 A |  | 100% |  |
| 84 | 2.2.2 | **嵌入式预约模块UI/UE设计** | 6d | 2016-04-25 | 2016-04-30 |  |  | 0d |
| 85 | 2.2.2.1 | **嵌入式模块** | 6d | 2016-04-25 | 2016-04-30 | 9 |  | 0d |
| 86 |  | 嵌入式模块 | 6d | 2016-04-25 A | 2016-04-30 |  | 80% | 4.8d |
| 87 | 2.2.2.2 | **在线预约医生** | 6d | 2016-04-25 | 2016-04-30 | 9 |  | 0d |
| 88 |  | 医生可预约时间表 | 6d | 2016-04-25 A | 2016-04-30 |  | 80% | 4.8d |
| 89 |  | 预约医生 | 6d | 2016-04-25 A | 2016-04-30 |  | 80% | 4.8d |
| 90 | 2.2.2.3 | **多语言** | 6d | 2016-04-25 | 2016-04-30 | 9 |  | 0d |
| 91 |  | 用户可选择语言配置 | 6d | 2016-04-25 A | 2016-04-30 |  | 80% | 4.8d |
| 92 | 2.2.3 | **桥软件UI/UE设计** | 6d | 2016-05-02 | 2016-05-07 |  |  | 0d |
| 93 | 2.2.3.1 | **同步医院和服务端数据库** | 6d | 2016-05-02 | 2016-05-07 | 84 |  | 0d |
| 94 |  | 同步医生可预约时间 | 6d | 2016-05-02 A | 2016-05-07 |  | 80% | 0d |
| 95 |  | 同步预约信息 | 6d | 2016-05-02 A | 2016-05-07 |  | 80% | 0d |
| 96 | 2.2.3.2 | **初始化诊所** | 6d | 2016-05-02 | 2016-05-07 | 84 |  | 0d |
| 97 |  | 初始化诊所 | 6d | 2016-05-02 A | 2016-05-07 |  | 80% | 0d |
| 98 | 2.2.3.3 | **创建系统服务** | 6d | 2016-05-02 | 2016-05-07 | 84 |  | 0d |
| 99 |  | 创建Windows服务 | 6d | 2016-05-02 A | 2016-05-07 |  | 80% | 0d |
| 100 | 2.2.4 | **手机APP UI/UE设计** | 6d | 2016-05-02 | 2016-05-07 |  |  | 0d |
| 101 | 2.2.4.1 | **预约医生** | 6d | 2016-05-02 | 2016-05-07 | 84 |  | 0d |
| 102 |  | 搜索医生 | 6d | 2016-05-02 A | 2016-05-07 |  | 80% | 0d |
| 103 |  | 预约医生 | 6d | 2016-05-02 A | 2016-05-07 |  | 80% | 0d |
| 104 |  | 自动Check-in | 6d | 2016-05-02 A | 2016-05-07 |  | 80% | 0d |
| 105 | 2.2.4.2 | **多语言** | 6d | 2016-05-02 | 2016-05-07 | 84 |  | 0d |
| 106 |  | 用户可选择语言配置 | 6d | 2016-05-02 A | 2016-05-07 |  | 80% | 0d |
| 107 | 2.3 | **设计阶段** | 12d | 2016-05-07 A | 2016-05-21 |  | 39% | 0d |
| 108 | 2.3.1 | **医疗黄页数据设计** | 12d | 2016-05-09 | 2016-05-21 |  |  | 0d |
| 109 | 2.3.1.1 | **诊所管理** | 6d | 2016-05-09 | 2016-05-14 | 58 |  | 0d |
| 110 |  | 新诊所注册 | 6d | 2016-05-09 A | 2016-05-14 A |  | 100% |  |
| 111 |  | 修改医生信息 | 6d | 2016-05-09 A | 2016-05-14 A |  | 100% |  |
| 112 |  | 更改密码/忘记密码 | 6d | 2016-05-09 A | 2016-05-14 A |  | 100% |  |
| 113 | 2.3.1.2 | **用户个人管理** | 6d | 2016-05-09 | 2016-05-14 | 58 |  | 0d |
| 114 |  | 新用户注册 | 6d | 2016-05-09 A | 2016-05-14 A |  | 100% |  |
| 115 |  | 用户修改个人信息 | 6d | 2016-05-09 A | 2016-05-14 A |  | 100% |  |
| 116 |  | 更改密码/忘记密码 | 6d | 2016-05-09 A | 2016-05-14 A |  | 100% |  |
| 117 | 2.3.1.3 | **管理员界面** | 6d | 2016-05-09 | 2016-05-14 | 58 |  | 0d |
| 118 |  | 查询医生和用户 | 6d | 2016-05-09 A | 2016-05-14 A |  | 100% |  |
| 119 |  | 改个人信息 | 3d | 2016-05-09 A | 2016-05-11 A |  | 100% |  |
| 120 |  | 重置账户密码 | 6d | 2016-05-09 A | 2016-05-14 A |  | 100% |  |
| 121 |  | 锁定账户 | 6d | 2016-05-09 A | 2016-05-14 A |  | 100% |  |
| 122 | 2.3.1.4 | **展示医生信息** | 6d | 2016-05-16 | 2016-05-21 | 117 |  | 0d |
| 123 |  | 根据类别展示医生 | 6d | 2016-05-16 A | 2016-05-21 |  | 80% | 0d |
| 124 |  | 根据地区展示医生 | 6d | 2016-05-16 A | 2016-05-21 |  | 80% | 0d |
| 125 | 2.3.1.5 | **搜索医生** | 6d | 2016-05-16 | 2016-05-21 | 117 |  | 0d |
| 126 |  | 根据类别搜索 | 6d | 2016-05-16 A | 2016-05-21 |  | 80% | 0d |
| 127 |  | 根据医生信息搜索 | 6d | 2016-05-16 A | 2016-05-21 |  | 80% | 0d |
| 128 |  | 根据距离搜索 | 6d | 2016-05-16 A | 2016-05-21 |  | 80% | 0d |
| 129 | 2.3.1.6 | **在线预约医生** | 6d | 2016-05-16 | 2016-05-21 | 117 |  | 0d |
| 130 |  | 用户可在线预约医生 | 6d | 2016-05-16 A | 2016-05-21 |  | 80% | 0d |
| 131 | 2.3.1.7 | **多语言** | 6d | 2016-05-16 | 2016-05-21 | 117 |  | 0d |
| 132 |  | 用户可选择语言配置 | 6d | 2016-05-16 A | 2016-05-21 |  | 80% | 0d |
| 133 | 2.3.2 | **嵌入式预约模块数据设计** | 12d | 2016-05-09 | 2016-05-21 |  |  | 0d |
| 134 | 2.3.2.1 | **嵌入式模块** | 12d | 2016-05-09 | 2016-05-21 | 58 |  | 0d |
| 135 |  | 嵌入式模块 | 12d | 2016-05-09 | 2016-05-21 |  |  | 0d |
| 136 | 2.3.2.2 | **在线预约医生** | 12d | 2016-05-09 | 2016-05-21 | 58 |  | 0d |
| 137 |  | 医生可预约时间表 | 12d | 2016-05-09 | 2016-05-21 |  |  | 0d |
| 138 |  | 预约医生 | 12d | 2016-05-09 | 2016-05-21 |  |  | 0d |
| 139 | 2.3.2.3 | **多语言** | 12d | 2016-05-09 | 2016-05-21 | 58 |  | 0d |
| 140 |  | 用户可选择语言配置 | 12d | 2016-05-09 | 2016-05-21 |  |  | 0d |

| ID | WBS | Task | Duration | Start | Finish | Predecessors | Total float | Constraint |
| --- | --- | --- | --- | --- | --- | --- | --- | --- |
| 141 | 2.3.3 | **桥软件数据设计** | 12d | 2016-05-09 | 2016-05-21 |  | 0d |  |
| 142 | 2.3.3.1 | **同步医院和服务端数据库** | 12d | 2016-05-09 | 2016-05-21 | 93 | 0d |  |
| 143 |  | 同步医生可预约时间 | 12d | 2016-05-09 | 2016-05-21 |  | 0d | start no earlier than 2016-05-09 |
| 144 |  | 同步预约信息 | 12d | 2016-05-09 | 2016-05-21 |  | 0d | start no earlier than 2016-05-09 |
| 145 | 2.3.3.2 | **初始化诊所** | 12d | 2016-05-09 | 2016-05-21 | 93 | 0d |  |
| 146 |  | 初始化诊所 | 12d | 2016-05-09 | 2016-05-21 |  | 0d |  |
| 147 | 2.3.3.3 | **创建系统服务** | 12d | 2016-05-09 | 2016-05-21 | 93 | 0d |  |
| 148 |  | 创建Windows服务 | 12d | 2016-05-09 | 2016-05-21 |  | 0d |  |
| 149 | 2.3.4 | **手机APP数据设计** | 12d | 2016-05-07 | 2016-05-21 |  | 0d |  |
| 150 | 2.3.4.1 | **预约医生** | 12d | 2016-05-09 | 2016-05-21 | 100 | 0d |  |
| 151 |  | 搜索医生 | 12d | 2016-05-09 | 2016-05-21 |  | 0d |  |
| 152 |  | 预约医生 | 12d | 2016-05-09 | 2016-05-21 |  | 0d |  |
| 153 |  | 自动Check-in | 12d | 2016-05-09 | 2016-05-21 |  | 0d |  |
| 154 | 2.3.4.2 | **多语言** | 0d | 2016-05-07 | 2016-05-07 | 100 | 12d |  |
| 155 |  | 用户可选择语言配置 | 0d | 2016-05-07 | 2016-05-07 |  | 12d |  |
| 156 |  | milestone meeting | 0d | 2016-05-09 | 2016-05-09 |  | 12d | start no earlier than 2016-05-09 |
| 157 | 2.4 | **开发阶段** | 90d | 2016-05-23 | 2016-09-03 |  | 0d |  |
| 158 | 2.4.1 | **医疗黄页研发** | 36d | 2016-05-23 | 2016-07-02 |  | 0d |  |
| 159 | 2.4.1.1 | **诊所管理** | 18d | 2016-05-23 | 2016-06-11 | 107 | 18d |  |
| 160 |  | 新诊所注册 | 18d | 2016-05-23 | 2016-06-11 |  | 18d |  |
| 161 |  | 修改医生信息 | 18d | 2016-05-23 | 2016-06-11 |  | 18d |  |
| 162 |  | 更改密码/忘记密码 | 18d | 2016-05-23 | 2016-06-11 |  | 18d |  |
| 163 | 2.4.1.2 | **用户个人管理** | 18d | 2016-05-23 | 2016-06-11 | 107 | 18d |  |
| 164 |  | 新用户注册 | 18d | 2016-05-23 | 2016-06-11 |  | 18d |  |
| 165 |  | 用户修改个人信息 | 18d | 2016-05-23 | 2016-06-11 |  | 18d |  |
| 166 |  | 更改密码/忘记密码 | 18d | 2016-05-23 | 2016-06-11 |  | 18d |  |
| 167 | 2.4.1.3 | **管理员界面** | 18d | 2016-05-23 | 2016-06-11 | 107 | 0d |  |
| 168 |  | 查询医生和用户 | 18d | 2016-05-23 | 2016-06-11 |  | 0d |  |
| 169 |  | 改个人信息 | 18d | 2016-05-23 | 2016-06-11 |  | 0d |  |
| 170 |  | 重置账户密码 | 18d | 2016-05-23 | 2016-06-11 |  | 0d |  |
| 171 |  | 锁定账户 | 18d | 2016-05-23 | 2016-06-11 |  | 0d |  |
| 172 | 2.4.1.4 | **展示医生信息** | 18d | 2016-06-13 | 2016-07-02 | 167 | 0d |  |
| 173 |  | 根据类别展示医生 | 18d | 2016-06-13 | 2016-07-02 |  | 0d |  |
| 174 |  | 根据地区展示医生 | 18d | 2016-06-13 | 2016-07-02 |  | 0d |  |
| 175 | 2.4.1.5 | **搜索医生** | 18d | 2016-06-13 | 2016-07-02 | 167 | 0d |  |
| 176 |  | 根据类别搜索 | 18d | 2016-06-13 | 2016-07-02 |  | 0d |  |
| 177 |  | 根据医生信息搜索 | 18d | 2016-06-13 | 2016-07-02 |  | 0d |  |
| 178 |  | 根据距离搜索 | 18d | 2016-06-13 | 2016-07-02 |  | 0d |  |
| 179 | 2.4.1.6 | **在线预约医生** | 18d | 2016-06-13 | 2016-07-02 | 167 | 0d |  |
| 180 |  | 用户可在线预约医生 | 18d | 2016-06-13 | 2016-07-02 |  | 0d |  |
| 181 | 2.4.1.7 | **多语言** | 18d | 2016-06-13 | 2016-07-02 | 167 | 0d |  |
| 182 |  | 用户可选择语言配置 | 18d | 2016-06-13 | 2016-07-02 |  | 0d |  |
| 183 | 2.4.2 | **嵌入式预约模块研发** | 36d | 2016-05-23 | 2016-07-02 |  | 0d |  |
| 184 | 2.4.2.1 | **嵌入式模块** | 36d | 2016-05-23 | 2016-07-02 | 107 | 0d |  |
| 185 |  | 嵌入式模块 | 36d | 2016-05-23 | 2016-07-02 |  | 0d |  |
| 186 | 2.4.2.2 | **在线预约医生** | 36d | 2016-05-23 | 2016-07-02 | 107 | 0d |  |
| 187 |  | 医生可预约时间表 | 36d | 2016-05-23 | 2016-07-02 |  | 0d |  |
| 188 |  | 预约医生 | 36d | 2016-05-23 | 2016-07-02 |  | 0d |  |
| 189 | 2.4.2.3 | **多语言** | 36d | 2016-05-23 | 2016-07-02 | 107 | 0d |  |
| 190 |  | 用户可选择语言配置 | 36d | 2016-05-23 | 2016-07-02 |  | 0d |  |
| 191 |  | milestone meeting | 0d | 2016-07-02 | 2016-07-02 | 189 | 54d |  |
| 192 | 2.4.4 | **桥软件研发** | 54d | 2016-07-04 | 2016-09-03 |  | 0d |  |
| 193 | 2.4.4.1 | **同步医院和服务端数据库** | 54d | 2016-07-04 | 2016-09-03 | 183 | 0d |  |
| 194 |  | 同步医生可预约时间 | 54d | 2016-07-04 | 2016-09-03 |  | 0d |  |
| 195 |  | 同步预约信息 | 54d | 2016-07-04 | 2016-09-03 |  | 0d |  |
| 196 | 2.4.4.2 | **初始化诊所** | 54d | 2016-07-04 | 2016-09-03 | 183 | 0d |  |
| 197 |  | 初始化诊所 | 54d | 2016-07-04 | 2016-09-03 |  | 0d |  |
| 198 | 2.4.4.3 | **创建系统服务** | 54d | 2016-07-04 | 2016-09-03 | 183 | 0d |  |
| 199 |  | 创建Windows服务 | 54d | 2016-07-04 | 2016-09-03 |  | 0d |  |
| 200 |  | milestone meeting | 0d | 2016-09-03 | 2016-09-03 | 192 | 0d |  |
| 201 | 2.4.6 | **手机APP研发** | 54d | 2016-07-04 | 2016-09-03 |  | 0d |  |
| 202 | 2.4.6.1 | **预约医生** | 54d | 2016-07-04 | 2016-09-03 | 158 | 0d |  |
| 203 |  | 搜索医生 | 54d | 2016-07-04 | 2016-09-03 |  | 0d |  |
| 204 |  | 预约医生 | 54d | 2016-07-04 | 2016-09-03 |  | 0d |  |
| 205 |  | 自动Check-in | 54d | 2016-07-04 | 2016-09-03 |  | 0d |  |
| 206 | 2.4.6.2 | **多语言** | 54d | 2016-07-04 | 2016-09-03 | 176 | 0d |  |
| 207 |  | 用户可选择语言配置 | 54d | 2016-07-04 | 2016-09-03 |  | 0d |  |
| 208 | 2.5 | **调试阶段** | 24d | 2016-09-05 | 2016-10-01 |  | 0d |  |
| 209 | 2.5.1 | **医疗黄页调试** | 12d | 2016-09-05 | 2016-09-17 |  | 0d |  |
| 210 | 2.5.1.1 | **诊所管理** | 6d | 2016-09-05 | 2016-09-10 | 157 | 6d |  |

| ID | WBS | Task | Duration | Start | Finish | Predecessors | Total float |
| --- | --- | --- | --- | --- | --- | --- | --- |
| 211 |  | 新诊所注册 | 6d | 2016-09-05 | 2016-09-10 |  | 6d |
| 212 |  | 修改医生信息 | 6d | 2016-09-05 | 2016-09-10 |  | 6d |
| 213 |  | 更改密码/忘记密码 | 6d | 2016-09-05 | 2016-09-10 |  | 6d |
| 214 | 2.5.1.2 | **用户个人管理** | 6d | 2016-09-05 | 2016-09-10 | 157 | 6d |
| 215 |  | 新用户注册 | 6d | 2016-09-05 | 2016-09-10 |  | 6d |
| 216 |  | 用户修改个人信息 | 6d | 2016-09-05 | 2016-09-10 |  | 6d |
| 217 |  | 更改密码/忘记密码 | 6d | 2016-09-05 | 2016-09-10 |  | 6d |
| 218 | 2.5.1.3 | **管理员界面** | 6d | 2016-09-05 | 2016-09-10 | 157 | 0d |
| 219 |  | 查询医生和用户 | 6d | 2016-09-05 | 2016-09-10 |  | 0d |
| 220 |  | 改个人信息 | 6d | 2016-09-05 | 2016-09-10 |  | 0d |
| 221 |  | 重置账户密码 | 6d | 2016-09-05 | 2016-09-10 |  | 0d |
| 222 |  | 锁定账户 | 6d | 2016-09-05 | 2016-09-10 |  | 0d |
| 223 | 2.5.1.4 | **展示医生信息** | 6d | 2016-09-12 | 2016-09-17 | 218 | 0d |
| 224 |  | 根据类别展示医生 | 6d | 2016-09-12 | 2016-09-17 |  | 0d |
| 225 |  | 根据地区展示医生 | 6d | 2016-09-12 | 2016-09-17 |  | 0d |
| 226 | 2.5.1.5 | **搜索医生** | 6d | 2016-09-12 | 2016-09-17 | 218 | 0d |
| 227 |  | 根据类别搜索 | 6d | 2016-09-12 | 2016-09-17 |  | 0d |
| 228 |  | 根据医生信息搜索 | 6d | 2016-09-12 | 2016-09-17 |  | 0d |
| 229 |  | 根据距离搜索 | 6d | 2016-09-12 | 2016-09-17 |  | 0d |
| 230 | 2.5.1.6 | **在线预约医生** | 6d | 2016-09-12 | 2016-09-17 | 218 | 0d |
| 231 |  | 用户可在线预约医生 | 6d | 2016-09-12 | 2016-09-17 |  | 0d |
| 232 | 2.5.1.7 | **多语言** | 6d | 2016-09-12 | 2016-09-17 | 218 | 0d |
| 233 |  | 用户可选择语言配置 | 6d | 2016-09-12 | 2016-09-17 |  | 0d |
| 234 | 2.5.2 | **嵌入式预约模块调试** | 12d | 2016-09-05 | 2016-09-17 |  | 0d |
| 235 | 2.5.2.1 | **嵌入式模块** | 12d | 2016-09-05 | 2016-09-17 | 157 | 0d |
| 236 |  | 嵌入式模块 | 12d | 2016-09-05 | 2016-09-17 |  | 0d |
| 237 | 2.5.2.2 | **在线预约医生** | 12d | 2016-09-05 | 2016-09-17 | 157 | 0d |
| 238 |  | 医生可预约时间表 | 12d | 2016-09-05 | 2016-09-17 |  | 0d |
| 239 |  | 预约医生 | 12d | 2016-09-05 | 2016-09-17 |  | 0d |
| 240 | 2.5.2.3 | **多语言** | 12d | 2016-09-05 | 2016-09-17 | 157 | 0d |
| 241 |  | 用户可选择语言配置 | 12d | 2016-09-05 | 2016-09-17 |  | 0d |
| 242 | 2.5.3 | **桥软件调试** | 12d | 2016-09-19 | 2016-10-01 |  | 0d |
| 243 | 2.5.3.1 | **同步医院和服务端数据库** | 12d | 2016-09-19 | 2016-10-01 | 234 | 0d |
| 244 |  | 同步医生可预约时间 | 12d | 2016-09-19 | 2016-10-01 |  | 0d |
| 245 |  | 同步预约信息 | 12d | 2016-09-19 | 2016-10-01 |  | 0d |
| 246 | 2.5.3.2 | **初始化诊所** | 12d | 2016-09-19 | 2016-10-01 | 234 | 0d |
| 247 |  | 初始化诊所 | 12d | 2016-09-19 | 2016-10-01 |  | 0d |
| 248 | 2.5.3.3 | **创建系统服务** | 12d | 2016-09-19 | 2016-10-01 | 234 | 0d |
| 249 |  | 创建Windows服务 | 12d | 2016-09-19 | 2016-10-01 |  | 0d |
| 250 | 2.5.4 | **手机APP调试** | 12d | 2016-09-19 | 2016-10-01 |  | 0d |
| 251 | 2.5.4.1 | **预约医生** | 12d | 2016-09-19 | 2016-10-01 | 209 | 0d |
| 252 |  | 搜索医生 | 12d | 2016-09-19 | 2016-10-01 |  | 0d |
| 253 |  | 预约医生 | 12d | 2016-09-19 | 2016-10-01 |  | 0d |
| 254 |  | 自动Check-in | 12d | 2016-09-19 | 2016-10-01 |  | 0d |
| 255 | 2.5.4.2 | **多语言** | 12d | 2016-09-19 | 2016-10-01 | 209 | 0d |
| 256 |  | 用户可选择语言配置 | 12d | 2016-09-19 | 2016-10-01 |  | 0d |
| 257 | 2.6 | **发布阶段** | 3d | 2016-10-03 | 2016-10-05 | 208 | 0d |
| 258 |  | 医疗黄页发布 | 3d | 2016-10-03 | 2016-10-05 |  | 0d |
| 259 |  | 嵌入式预约模块发布 | 3d | 2016-10-03 | 2016-10-05 |  | 0d |
| 260 |  | 桥软件发布 | 3d | 2016-10-03 | 2016-10-05 |  | 0d |
| 261 |  | iphone手机APP发布 | 3d | 2016-10-03 | 2016-10-05 |  | 0d |
| 262 |  | Android手机APP发布 | 3d | 2016-10-03 | 2016-10-05 |  | 0d |
| 263 |  | 系统验收 | 2d | 2016-10-06 | 2016-10-07 | 257 | 0d |
| 264 |  | FocusData项目维护 | 365d | 2016-10-08 | 2018-02-26 | 263 | 0d |

## Version 2 (saved 2016-05-23)

Note of the change: 新增系统表FD_PATIENT

Last finish stays 2018-02-26. Complete tasks 62 → 94.

Changed:

| ID | Task | Start | Finish | Complete | Total float |
| --- | --- | --- | --- | --- | --- |
| 1 | **Contracts** | 2016-04-01 A | 2016-04-01 A | 0% → 100% | 0d → none |
| 8 | **FocusData项目建设** |  |  | 20% → 29% |  |
| 10 | **医疗黄页需求说明书** | 2016-04-11 A | 2016-04-16 A | 0% → 100% | 0d → none |
| 11 | **诊所管理** | 2016-04-11 A | 2016-04-13 A | 0% → 100% | 0d → none |
| 15 | **用户个人管理** | 2016-04-11 A | 2016-04-13 A | 0% → 100% | 0d → none |
| 19 | **管理员界面** | 2016-04-11 A | 2016-04-13 A | 0% → 100% | 0d → none |
| 24 | **展示医生信息** | 2016-04-14 A | 2016-04-16 A | 0% → 100% | 0d → none |
| 27 | **搜索医生** | 2016-04-14 A | 2016-04-16 A | 0% → 100% | 0d → none |
| 31 | **在线预约医生** | 2016-04-14 A | 2016-04-16 A | 0% → 100% | 0d → none |
| 33 | **多语言** | 2016-04-14 A | 2016-04-16 A | 0% → 100% | 0d → none |
| 35 | **嵌入式预约模块需求说明书** | 2016-04-11 A | 2016-04-16 A | 0% → 100% | 0d → none |
| 36 | **嵌入式模块** | 2016-04-11 A | 2016-04-16 A | 0% → 100% | 0d → none |
| 38 | **在线预约医生** | 2016-04-11 A | 2016-04-16 A | 0% → 100% | 0d → none |
| 41 | **多语言** | 2016-04-11 A | 2016-04-16 A | 0% → 100% | 0d → none |
| 43 | **桥软件需求说明书** | 2016-04-18 A | 2016-04-23 A | 0% → 100% | 0d → none |
| 44 | **同步医院和服务端数据库** | 2016-04-18 A | 2016-04-23 A | 0% → 100% | 0d → none |
| 47 | **初始化诊所** | 2016-04-18 A | 2016-04-23 A | 0% → 100% | 0d → none |
| 49 | **创建系统服务** | 2016-04-18 A | 2016-04-23 A | 0% → 100% | 0d → none |
| 51 | **手机APP需求说明书** | 2016-04-18 A | 2016-04-23 A | 0% → 100% | 0d → none |
| 52 | **预约医生** | 2016-04-18 A | 2016-04-23 A | 0% → 100% | 0d → none |
| 56 | **多语言** | 2016-04-18 A | 2016-04-23 A | 0% → 100% | 0d → none |
| 58 | **UI/UE设计阶段** |  | 2016-05-07 A | 88% → 100% | 0d → none |
| 59 | **医疗黄页UI/UE设计** | 2016-04-25 A | 2016-04-30 A | 0% → 100% | 0d → none |
| 60 | **诊所管理** | 2016-04-25 A | 2016-04-27 A | 0% → 100% | 0d → none |
| 64 | **用户个人管理** | 2016-04-25 A | 2016-04-27 A | 0% → 100% | 0d → none |
| 68 | **管理员界面** | 2016-04-25 A | 2016-04-27 A | 0% → 100% | 0d → none |
| 73 | **展示医生信息** | 2016-04-28 A | 2016-04-30 A | 0% → 100% | 0d → none |
| 76 | **搜索医生** | 2016-04-28 A | 2016-04-30 A | 0% → 100% | 0d → none |
| 80 | **在线预约医生** | 2016-04-28 A | 2016-04-30 A | 0% → 100% | 0d → none |
| 82 | **多语言** | 2016-04-28 A | 2016-04-30 A | 0% → 100% | 0d → none |
| 84 | **嵌入式预约模块UI/UE设计** | 2016-04-25 A | 2016-04-30 A | 0% → 100% | 0d → none |
| 85 | **嵌入式模块** | 2016-04-25 A | 2016-04-30 A | 0% → 100% | 0d → none |
| 86 | 嵌入式模块 |  | 2016-04-30 A | 80% → 100% | 4.8d → none |
| 87 | **在线预约医生** | 2016-04-25 A | 2016-04-30 A | 0% → 100% | 0d → none |
| 88 | 医生可预约时间表 |  | 2016-04-30 A | 80% → 100% | 4.8d → none |
| 89 | 预约医生 |  | 2016-04-30 A | 80% → 100% | 4.8d → none |
| 90 | **多语言** | 2016-04-25 A | 2016-04-30 A | 0% → 100% | 0d → none |
| 91 | 用户可选择语言配置 |  | 2016-04-30 A | 80% → 100% | 4.8d → none |
| 92 | **桥软件UI/UE设计** | 2016-05-02 A | 2016-05-07 A | 0% → 100% | 0d → none |
| 93 | **同步医院和服务端数据库** | 2016-05-02 A | 2016-05-07 A | 0% → 100% | 0d → none |
| 94 | 同步医生可预约时间 |  | 2016-05-07 A | 80% → 100% | 0d → none |
| 95 | 同步预约信息 |  | 2016-05-07 A | 80% → 100% | 0d → none |
| 96 | **初始化诊所** | 2016-05-02 A | 2016-05-07 A | 0% → 100% | 0d → none |
| 97 | 初始化诊所 |  | 2016-05-07 A | 80% → 100% | 0d → none |
| 98 | **创建系统服务** | 2016-05-02 A | 2016-05-07 A | 0% → 100% | 0d → none |
| 99 | 创建Windows服务 |  | 2016-05-07 A | 80% → 100% | 0d → none |
| 100 | **手机APP UI/UE设计** | 2016-05-02 A | 2016-05-07 A | 0% → 100% | 0d → none |
| 101 | **预约医生** | 2016-05-02 A | 2016-05-07 A | 0% → 100% | 0d → none |
| 102 | 搜索医生 |  | 2016-05-07 A | 80% → 100% | 0d → none |
| 103 | 预约医生 |  | 2016-05-07 A | 80% → 100% | 0d → none |
| 104 | 自动Check-in |  | 2016-05-07 A | 80% → 100% | 0d → none |
| 105 | **多语言** | 2016-05-02 A | 2016-05-07 A | 0% → 100% | 0d → none |
| 106 | 用户可选择语言配置 |  | 2016-05-07 A | 80% → 100% | 0d → none |
| 107 | **设计阶段** | 2016-05-07 A → 2016-05-07 | 2016-05-21 A | 39% → 100% | 0d → none |
| 108 | **医疗黄页数据设计** | 2016-05-09 A | 2016-05-21 A | 0% → 100% | 0d → none |
| 109 | **诊所管理** | 2016-05-09 A | 2016-05-14 A | 0% → 100% | 0d → none |
| 113 | **用户个人管理** | 2016-05-09 A | 2016-05-14 A | 0% → 100% | 0d → none |
| 117 | **管理员界面** | 2016-05-09 A | 2016-05-14 A | 0% → 100% | 0d → none |
| 122 | **展示医生信息** | 2016-05-16 A | 2016-05-21 A | 0% → 100% | 0d → none |
| 123 | 根据类别展示医生 |  | 2016-05-21 A | 80% → 100% | 0d → none |
| 124 | 根据地区展示医生 |  | 2016-05-21 A | 80% → 100% | 0d → none |
| 125 | **搜索医生** | 2016-05-16 A | 2016-05-21 A | 0% → 100% | 0d → none |
| 126 | 根据类别搜索 |  | 2016-05-21 A | 80% → 100% | 0d → none |
| 127 | 根据医生信息搜索 |  | 2016-05-21 A | 80% → 100% | 0d → none |
| 128 | 根据距离搜索 |  | 2016-05-21 A | 80% → 100% | 0d → none |
| 129 | **在线预约医生** | 2016-05-16 A | 2016-05-21 A | 0% → 100% | 0d → none |
| 130 | 用户可在线预约医生 |  | 2016-05-21 A | 80% → 100% | 0d → none |
| 131 | **多语言** | 2016-05-16 A | 2016-05-21 A | 0% → 100% | 0d → none |
| 132 | 用户可选择语言配置 |  | 2016-05-21 A | 80% → 100% | 0d → none |
| 133 | **嵌入式预约模块数据设计** | 2016-05-09 A | 2016-05-21 A | 0% → 100% | 0d → none |

| ID | Task | Start | Finish | Duration | Complete | Total float |
| --- | --- | --- | --- | --- | --- | --- |
| 134 | **嵌入式模块** | 2016-05-09 A | 2016-05-21 A |  | 0% → 100% | 0d → none |
| 135 | 嵌入式模块 | 2016-05-09 A | 2016-05-21 A |  | 0% → 100% | 0d → none |
| 136 | **在线预约医生** | 2016-05-09 A | 2016-05-21 A |  | 0% → 100% | 0d → none |
| 137 | 医生可预约时间表 | 2016-05-09 A | 2016-05-21 A |  | 0% → 100% | 0d → none |
| 138 | 预约医生 | 2016-05-09 A | 2016-05-21 A |  | 0% → 100% | 0d → none |
| 139 | **多语言** | 2016-05-09 A | 2016-05-21 A |  | 0% → 100% | 0d → none |
| 140 | 用户可选择语言配置 | 2016-05-09 A | 2016-05-21 A |  | 0% → 100% | 0d → none |
| 141 | **桥软件数据设计** | 2016-05-09 A | 2016-05-21 A |  | 0% → 100% | 0d → none |
| 142 | **同步医院和服务端数据库** | 2016-05-09 A | 2016-05-21 A |  | 0% → 100% | 0d → none |
| 143 | 同步医生可预约时间 | 2016-05-09 A | 2016-05-21 A |  | 0% → 100% | 0d → none |
| 144 | 同步预约信息 | 2016-05-09 A | 2016-05-21 A |  | 0% → 100% | 0d → none |
| 145 | **初始化诊所** | 2016-05-09 A | 2016-05-21 A |  | 0% → 100% | 0d → none |
| 146 | 初始化诊所 | 2016-05-09 A | 2016-05-21 A |  | 0% → 100% | 0d → none |
| 147 | **创建系统服务** | 2016-05-09 A | 2016-05-21 A |  | 0% → 100% | 0d → none |
| 148 | 创建Windows服务 | 2016-05-09 A | 2016-05-21 A |  | 0% → 100% | 0d → none |
| 149 | **手机APP数据设计** |  | 2016-05-21 A |  | 0% → 100% | 0d → none |
| 150 | **预约医生** | 2016-05-09 A | 2016-05-21 A |  | 0% → 100% | 0d → none |
| 151 | 搜索医生 | 2016-05-09 A | 2016-05-21 A |  | 0% → 100% | 0d → none |
| 152 | 预约医生 | 2016-05-09 A | 2016-05-21 A |  | 0% → 100% | 0d → none |
| 153 | 自动Check-in | 2016-05-09 A | 2016-05-21 A |  | 0% → 100% | 0d → none |
| 154 | **多语言** |  | 2016-05-07 → 2016-05-09 A (+2d) | 0d → 1d | 0% → 100% | 12d → none |
| 155 | 用户可选择语言配置 | 2016-05-07 → 2016-05-09 A (+2d) | 2016-05-07 → 2016-05-09 A (+2d) | 0d → 1d | 0% → 100% | 12d → none |
| 156 | milestone meeting | 2016-05-09 A | 2016-05-09 A | 0d → 1d | 0% → 100% | 12d → none |
